Schedule from MS Project, 2011-01-13 to 2012-03-12, A marks actual dates.

## Calendars

- Standard: Mon-Fri 08:00-12:00, 13:00-17:00; Sat-Sun off. Exceptions (off unless hours are given): 2011-05-30, 2011-07-04, 2011-09-05.

## Resources

| Resource |
| --- |
| Prasad |
| Dan |
| Vijay |
| Xiaoling |
| Aynur |
| Greg |
| (Xiaoling) |
| ` |

## Schedule

| ID | WBS | Task | Type | Duration | Start | Finish | Predecessors | Complete | Constraint | Resources | Work | Actual work |
| --- | --- | --- | --- | --- | --- | --- | --- | --- | --- | --- | --- | --- |
| 3 | 1 | **SDK 4.2.3** |  | 50.7d | 2011-03-15 A | 2011-05-24 A |  | 100% |  |  | 392h | 392h |
| 4 | 1.1 | GF 30729 Provide option to generate JUnit Tests for Logical Model Domain classes [already done] | milestone | 0d | 2011-03-15 A | 2011-03-15 A |  | 100% | start no earlier than 2011-03-15 |  |  |  |
| 5 | 1.2 | GF 30749 Third-Party Jars within the Code Generation Process |  | 5d | 2011-03-15 A | 2011-03-21 A |  | 100% | start no earlier than 2011-03-15 | Dan [75%] | 30h | 30h |
| 6 | 1.3 | GF 30753 Generation of the "not-null" Attribute with the "property" Element Node (not-null constraints) |  | 3d | 2011-03-30 A | 2011-04-01 A |  | 100% | start no earlier than 2011-03-30 | Vijay | 24h | 24h |
| 7 | 1.4 | GF 30748 Bi-directional self-associations |  | 5d | 2011-04-04 A | 2011-04-08 A |  | 100% | start no earlier than 2011-04-04 | Vijay | 40h | 40h |
| 8 | 1.5 | **GF 30510 Support (code generation) for interfaces** |  | 9d | 2011-03-30 A | 2011-04-11 A |  | 100% |  |  | 72h | 72h |
| 9 | 1.5.1 | Design |  | 2d | 2011-03-30 A | 2011-03-31 A |  | 100% | start no earlier than 2011-03-30 | Prasad | 16h | 16h |
| 10 | 1.5.2 | XMI Handler |  | 3d | 2011-04-01 A | 2011-04-05 A | 9 | 100% |  | Prasad | 24h | 24h |
| 11 | 1.5.3 | Code generation |  | 3d | 2011-04-06 A | 2011-04-08 A | 10 | 100% |  | Prasad | 24h | 24h |
| 12 | 1.5.4 | Test |  | 1d | 2011-04-11 A | 2011-04-11 A | 11 | 100% |  | Prasad | 8h | 8h |
| 13 | 1.6 | Dev testing and documentation |  | 4d | 2011-04-12 A | 2011-04-15 A | 4, 5, 6, 7, 12 | 100% |  | Prasad | 32h | 32h |
| 14 | 1.7 | Ivy support (XMI handler) |  | 2d | 2011-04-18 A | 2011-04-19 A | 13 | 100% |  | Prasad [25%] | 4h | 4h |
| 15 | 1.8 | QA test plan |  | 3d | 2011-04-14 A | 2011-04-18 A | 13FF | 100% | must start on 2011-04-14 | Xiaoling | 24h | 24h |
| 16 | 1.9 | QA |  | 9d | 2011-04-20 A | 2011-05-02 A | 14, 15 | 100% |  | Xiaoling | 72h | 72h |
| 17 | 1.10 | QA support |  | 7d | 2011-04-20 A | 2011-04-28 A | 16SS | 100% |  | Prasad [25%] | 14h | 14h |
| 18 | 1.11 | Optional QA for 30508, 30510, 30511, 30524 |  | 10d | 2011-05-09 A | 2011-05-24 A | 16 | 100% | start no earlier than 2011-05-09 | Xiaoling | 80h | 80h |
| 21 | 2 | **SDK 4.2.3 alternate database testing** |  | 18d? | 2011-06-08 A | 2011-07-01 A |  | 100% |  |  | 112h | 112h |
| 22 | 2.1 | Dev-supplied JUnits on Oracle |  | 2d | 2011-06-14 A | 2011-06-15 A |  | 100% | start no earlier than 2011-06-14 | Xiaoling | 16h | 16h |
| 23 | 2.2 | Smoke-test and 4.2.3 regression on Oracle |  | 3d | 2011-06-16 A | 2011-06-20 A | 22 | 100% |  | Xiaoling | 24h | 24h |
| 24 | 2.3 | Postgres installation issues |  | 5d? | 2011-06-08 A | 2011-06-14 A |  | 100% | start no earlier than 2011-06-08 |  |  |  |
| 25 | 2.4 | Build/deployment problems with Postgres |  | 2d | 2011-06-21 A | 2011-06-22 A | 24, 23 | 100% |  | Xiaoling | 16h | 16h |
| 26 | 2.5 | Dev-supplied JUnits on Postgres |  | 2d | 2011-06-23 A | 2011-06-24 A | 23, 25, 24 | 100% |  | Xiaoling | 16h | 16h |
| 27 | 2.6 | Smoke-test and 4.2.3 regression on Postgres |  | 5d | 2011-06-27 A | 2011-07-01 A | 26 | 100% |  | Xiaoling | 40h | 40h |
| 30 | 3 | **GF 31030 - CSM/UPT patch for EMMES (UPT-Tomcat support)** |  | 44d? | 2011-04-21 A | 2011-06-22 A |  | 100% |  |  | 149.46h | 149.46h |
| 31 | 3.1 | Installation instructions for Tomcat |  | 3d | 2011-04-21 A | 2011-05-04 A |  | 100% | start no earlier than 2011-04-21 | Prasad [75%] | 17.46h | 17.46h |
| 32 | 3.2 | UPT fixes |  | 6d | 2011-04-25 A | 2011-05-02 A |  | 100% | start no earlier than 2011-04-25 | Prasad [75%] | 36h | 36h |
| 33 | 3.3 | packaging |  | 1d | 2011-05-12 A | 2011-05-12 A | 32 | 100% | start no earlier than 2011-05-12 | Prasad | 8h | 8h |
| 34 | 3.4 | QA (limited to Tomcat and mySQL) |  | 7d | 2011-05-13 A | 2011-05-23 A | 33 | 100% | start no earlier than 2011-05-04 | Aynur | 56h | 56h |
| 35 | 3.5 | Release activities |  | 2d? | 2011-05-24 A | 2011-05-25 A | 34 | 100% |  | Prasad | 16h | 16h |

| ID | WBS | Task | Duration | Start | Finish | Predecessors | Complete | Remaining | Total slack | Constraint | Resources | Work | Actual work |
| --- | --- | --- | --- | --- | --- | --- | --- | --- | --- | --- | --- | --- | --- |
| 36 | 3.6 | **Alternate distribution packages** | 12d | 2011-06-07 A | 2011-06-22 A |  | 100% |  |  |  |  | 16h | 16h |
| 37 | 3.6.1 | Smoke-test GUI installer distribution | 4d | 2011-06-07 A | 2011-06-10 A |  | 100% |  |  | start no earlier than 2011-06-07 | Greg [25%] | 8h | 8h |
| 38 | 3.6.2 | Smoke-test upgrade distribution | 4d | 2011-06-15 A | 2011-06-22 A |  | 100% |  |  | start no earlier than 2011-06-15 | Greg [25%] | 8h | 8h |
| 41 | 4 | **Technology stack upgrade to 2011 "current" and "future"** | 104d? | 2011-05-13 A | 2011-10-10 |  | 57% | 45.12d? | 0d |  |  | 1456h | 944h |
| 42 | 4.1 | CLM/LLT (base CLM only, CSM relies on CLM) | 1d | 2011-05-13 A | 2011-05-13 A |  | 100% |  |  | start no earlier than 2011-05-13 | Prasad | 8h | 8h |
| 43 | 4.2 | **CSM/UPT/CGMM** | 17d | 2011-05-16 A | 2011-06-08 A | 42 | 100% |  |  |  |  | 88h | 88h |
| 44 | 4.2.1 | JDK (migrate - done for a patch) | 1d | 2011-05-16 A | 2011-05-16 A |  | 100% |  |  | start no earlier than 2011-05-11 | Prasad | 8h | 8h |
| 45 | 4.2.2 | JBoss (migrate - done for a patch) | 1d | 2011-05-17 A | 2011-05-17 A | 44 | 100% |  |  |  | Prasad | 8h | 8h |
| 46 | 4.2.3 | UPT/Tomcat (migrate - in progress for a patch) | 1d | 2011-05-18 A | 2011-05-18 A | 45 | 100% |  |  |  | Prasad | 8h | 8h |
| 47 | 4.2.4 | Other | 2d | 2011-05-23 A | 2011-05-26 A | 46 | 100% |  |  | start no earlier than 2011-05-23 | Prasad | 16h | 16h |
| 48 | 4.2.5 | CGMM | 6d | 2011-06-01 A | 2011-06-08 A |  | 100% |  |  | start no earlier than 2011-06-01 | Prasad | 48h | 48h |
| 49 | 4.3 | CLM/LLT (LLT relies on CSM) | 2d | 2011-05-27 A | 2011-05-31 A | 43 | 100% |  |  |  | Prasad | 16h | 16h |
| 50 | 4.4 | XMI Handler (initial) | 2d | 2011-06-09 A | 2011-06-10 A |  | 100% |  |  | start no earlier than 2011-06-09 | Prasad [50%] | 8h | 8h |
| 51 | 4.5 | **SDK** | 15d | 2011-06-14 A | 2011-07-05 A | 50 | 100% |  |  |  |  | 72h | 72h |
| 52 | 4.5.1 | JDK | 1d | 2011-06-14 A | 2011-06-14 A |  | 100% |  |  | must start on 2011-06-14 | Prasad | 8h | 8h |
| 53 | 4.5.2 | Jboss | 1d | 2011-06-15 A | 2011-06-15 A | 52 | 100% |  |  |  | Prasad | 8h | 8h |
| 54 | 4.5.3 | Spring | 3d | 2011-06-22 A | 2011-06-24 A | 53 | 100% |  |  | must start on 2011-06-22 | Prasad [50%] | 12h | 12h |
| 55 | 4.5.4 | Hibernate | 2d | 2011-06-27 A | 2011-06-28 A | 54 | 100% |  |  |  | Prasad | 16h | 16h |
| 56 | 4.5.5 | Other technologies | 2d | 2011-06-29 A | 2011-06-30 A | 55 | 100% |  |  |  | Prasad [75%] | 12h | 12h |
| 57 | 4.5.6 | CQL->HQL workaround and Junit updates [aborted] | 2d | 2011-07-01 A | 2011-07-05 A | 56 | 100% |  |  | start no earlier than 2011-07-01 | Prasad | 16h | 16h |
| 58 | 4.6 | XMI Handler (formalized) | 1d? | 2011-07-06 A | 2011-07-06 A | 51 | 100% |  |  |  | Prasad | 8h | 8h |
| 59 | 4.7 | **Refocus from 2010 to 2011 "current" tech stack** | 4d | 2011-07-07 A | 2011-07-12 A |  | 100% |  |  |  |  | 32h | 32h |
| 60 | 4.7.1 | Re-version CLM API 4.2 to 4.1.1 | 1d | 2011-07-07 A | 2011-07-07 A |  | 100% |  |  | start no earlier than 2011-07-07 | Prasad | 8h | 8h |
| 61 | 4.7.2 | Re-version CSM 4.3 to 4.2.3 | 1d | 2011-07-08 A | 2011-07-08 A | 60 | 100% |  |  | start no earlier than 2011-07-08 | Prasad | 8h | 8h |
| 62 | 4.7.3 | Apply tech upgrades against SDK 4.4 to make 4.4.1 | 1.5d | 2011-07-11 A | 2011-07-12 A | 60 | 100% |  |  | start no earlier than 2011-07-11 | Prasad | 12h | 12h |
| 63 | 4.7.4 | Re-version CLM LLT 4.2 to 4.1.1 | 0.5d | 2011-07-12 A | 2011-07-12 A | 62 | 100% |  |  | start no earlier than 2011-07-12 | Prasad | 4h | 4h |

| ID | WBS | Task | Type | Duration | Start | Finish | Predecessors | Complete | Remaining | Total slack | Free slack | Constraint | Resources | Work | Actual work |
| --- | --- | --- | --- | --- | --- | --- | --- | --- | --- | --- | --- | --- | --- | --- | --- |
| 64 | 4.8 | **2011 "future"** |  | 4d | 2011-08-24 | 2011-08-29 | 175 |  |  | 9d | 0d | start no earlier than 2011-08-02 |  | 24h |  |
| 65 | 4.8.1 | CLM 4.1.2 (Spring/Struts/Ant) |  | 1d | 2011-08-24 | 2011-08-24 |  |  |  | 5d | 0d | start no earlier than 2011-08-24 | Prasad [75%] | 6h |  |
| 66 | 4.8.2 | CSM 4.2.4 (Spring/Struts/Ant) |  | 1d | 2011-08-25 | 2011-08-25 | 65 |  |  | 5d | 0d | start no earlier than 2011-07-13 | Prasad [75%] | 6h |  |
| 67 | 4.8.3 | SDK 4.5 (Spring/Struts/Ant plus 4.2.3 features) |  | 2d | 2011-08-26 | 2011-08-29 | 66 |  |  | 5d |  | start no earlier than 2011-07-13 | Prasad [75%] | 12h |  |
| 68 | 4.9 | ISO 21090 ("current" and "future") (Spring, Ant?) |  | 5d | 2011-08-30 | 2011-09-06 | 64 |  |  | 5d | 0d |  | Prasad [75%] | 30h |  |
| 69 | 4.10 | Workbench ("current" and "future") |  | 5d | 2011-09-07 | 2011-09-13 | 68 |  |  | 9d | 0d |  | Prasad [50%] | 20h |  |
| 70 | 4.11 | (WebSSO?) | milestone | 0d | 2011-09-13 | 2011-09-13 | 69 |  |  | 19d |  |  |  |  |  |
| 71 | 4.12 | **QA 2010 "current" [stopped]** |  | 8d | 2011-06-27 A | 2011-07-07 A |  | 100% |  |  |  |  |  | 80h | 80h |
| 72 | 4.12.1 | CLM/CSM [stopped] |  | 8d | 2011-06-27 A | 2011-07-07 A | 49 | 100% |  |  |  | start no earlier than 2011-06-27 | Aynur | 64h | 64h |
| 73 | 4.12.2 | SDK [stopped] |  | 2d | 2011-07-06 A | 2011-07-07 A | 51 | 100% |  |  |  | start no earlier than 2011-07-05 | Xiaoling | 16h | 16h |
| 74 | 4.13 | SDK 4.4.1 and CSM 4.2.3 bug fixes |  | 5d | 2011-07-18 A | 2011-07-22 A |  | 100% |  |  |  | start no earlier than 2011-07-18 | Prasad [75%] | 30h | 30h |
| 75 | 4.14 | QA support and minor bug fixes (2011 "current") |  | 11d | 2011-07-18 A | 2011-08-01 A |  | 100% |  |  |  | start no earlier than 2011-07-18 | Prasad [25%] | 22h | 22h |
| 76 | 4.15 | QA support and minor bug fixes (2011 "current") |  | 14d | 2011-08-02 A | 2011-08-23 A |  | 100% |  |  |  | start no earlier than 2011-08-02 | Prasad | 112h | 112h |
| 77 | 4.16 | QA support and minor bug fixes (2011 "current") |  | 9d | 2011-08-24 | 2011-09-06 |  |  |  | 24d |  | start no earlier than 2011-08-24 | Prasad [25%] | 18h |  |
| 78 | 4.17 | **QA 2011 "current"** |  | 45d? | 2011-07-11 A | 2011-09-12 |  | 66% | 15.25d? | 0d |  |  |  | 604h | 468h |
| 79 | 4.17.1 | **CSM 4.2.3** |  | 36d | 2011-07-11 A | 2011-08-29 | 61 | 97% | 1.16d | 3d | 0d |  |  | 248h | 240h |
| 80 | 4.17.1.1 | set-up and 1st round |  | 6d | 2011-07-11 A | 2011-07-18 A | 61 | 100% |  |  |  |  | Aynur | 48h | 48h |
| 81 | 4.17.1.2 | update test cases (as needed) |  | 1d | 2011-07-19 A | 2011-07-19 A | 61 | 100% |  |  |  | start no earlier than 2011-07-19 | Aynur | 8h | 8h |
| 82 | 4.17.1.3 | UPT regression - mySQL |  | 6d | 2011-07-20 A | 2011-07-27 A |  | 100% |  |  |  | start no earlier than 2011-07-20 | Aynur | 48h | 48h |
| 83 | 4.17.1.4 | deployment testing - Oracle and PostgreSQL |  | 2d | 2011-07-28 A | 2011-07-29 A |  | 100% |  |  |  | start no earlier than 2011-07-28 | Aynur | 16h | 16h |
| 84 | 4.17.1.5 | UPT regression - Oracle |  | 4d | 2011-08-01 A | 2011-08-04 A | 83 | 100% |  |  |  |  | Aynur | 32h | 32h |
| 85 | 4.17.1.6 | instance level security |  | 5d | 2011-08-05 A | 2011-08-11 A | 84 | 100% |  |  |  |  | Aynur | 40h | 40h |
| 86 | 4.17.1.7 | UPT regression - PostgreSQL |  | 4d | 2011-08-12 A | 2011-08-17 A | 85 | 100% |  |  |  |  | Aynur | 32h | 32h |
| 87 | 4.17.1.8 | API testing |  | 3d | 2011-08-18 A | 2011-08-29 | 86 | 67% | 1d | 3d |  | start no earlier than 2011-08-18 | Aynur | 24h | 16h |
| 88 | 4.17.2 | CLM 4.1.1 |  | 3d | 2011-08-30 | 2011-09-01 | 63, 79 |  |  | 3d | 0d | start no earlier than 2011-06-27 | Aynur | 24h |  |
| 89 | 4.17.3 | CSM/CLM test report |  | 1d | 2011-09-02 | 2011-09-02 | 79, 88 |  |  | 3d | 0d | start no earlier than 2011-08-02 | Aynur | 8h |  |

| ID | WBS | Task | Type | Duration | Start | Finish | Predecessors | Complete | Remaining | Total slack | Free slack | Constraint | Resources | Work | Actual work |
| --- | --- | --- | --- | --- | --- | --- | --- | --- | --- | --- | --- | --- | --- | --- | --- |
| 90 | 4.17.4 | **SDK 4.4.1** |  | 43.5d? | 2011-07-12 A | 2011-09-12 |  | 53% | 20.33d? | 0d |  |  |  | 324h | 228h |
| 91 | 4.17.4.1 | set-up and initial tests |  | 3.5d | 2011-07-12 A | 2011-07-15 A | 62 | 100% |  |  |  |  | Xiaoling | 28h | 28h |
| 92 | 4.17.4.2 | Oracle database including junit tests |  | 8d | 2011-07-18 A | 2011-07-27 A | 91 | 100% |  |  |  |  | Xiaoling | 64h | 64h |
| 93 | 4.17.4.3 | Tomcat 6.0.20 with database Oracle and MySQL, Junit tests |  | 6d | 2011-07-28 A | 2011-08-04 A | 92 | 100% |  |  |  |  | Xiaoling | 48h | 48h |
| 94 | 4.17.4.4 | jboss 5.1.0 with database Oracle and MySQL, Junit tests |  | 2d | 2011-08-05 A | 2011-08-08 A | 93 | 100% |  |  |  |  | Xiaoling | 16h | 16h |
| 95 | 4.17.4.5 | post-fix retests and backward compatibility tests |  | 4d | 2011-08-09 A | 2011-08-12 A | 94 | 100% |  |  |  |  | Xiaoling | 32h | 32h |
| 96 | 4.17.4.6 | Tomcat and Jboss with PostgreSQL database and Junit tests [split] |  | 3d | 2011-08-15 A | 2011-08-17 A | 95 | 100% |  |  |  |  | Xiaoling | 24h | 24h |
| 97 | 4.17.4.7 | PostgreSQL availability and issues (?) |  | 13d? | 2011-08-08 | 2011-08-24 |  |  |  | 0d |  | start no earlier than 2011-08-08 |  |  |  |
| 98 | 4.17.4.8 | verification of Grid authentication fix |  | 2d | 2011-08-18 A | 2011-08-19 A |  | 100% |  |  |  | start no earlier than 2011-08-18 | Xiaoling | 16h | 16h |
| 99 | 4.17.4.9 | Tomcat and Jboss with PostgreSQL database and Junit tests |  | 3d | 2011-08-25 | 2011-08-29 | 97 |  |  | 0d |  | start no earlier than 2011-08-25 | Xiaoling | 24h |  |
| 100 | 4.17.4.10 | adding and modifying *.java test cases in Junit, local-client, and remote client for Writable API; |  | 2d | 2011-08-30 | 2011-08-31 | 99 |  |  | 0d |  | start no earlier than 2011-08-02 | Xiaoling | 16h |  |
| 101 | 4.17.4.11 | creating QTP/PEDAL test cases and run |  | 3d | 2011-09-01 | 2011-09-06 | 100 |  |  | 0d |  | start no earlier than 2011-08-02 | Xiaoling | 24h |  |
| 102 | 4.17.4.12 | documentation |  | 1d | 2011-09-07 | 2011-09-07 | 101 |  |  | 0d |  | start no earlier than 2011-08-02 | Xiaoling | 8h |  |
| 103 | 4.17.4.13 | 3rd round (?) |  | 3d? | 2011-09-08 | 2011-09-12 | 102 |  |  | 0d |  | start no earlier than 2011-08-02 | Xiaoling | 24h |  |
| 104 | 4.18 | Release activities 2011 current - concurrent with QA |  | 3d | 2011-09-08 | 2011-09-12 | 78FF |  |  | 0d |  | start no earlier than 2011-07-20 | Prasad [50%] | 12h |  |
| 105 | 4.19 | Release activities 2011 "current" - post QA |  | 5d | 2011-09-13 | 2011-09-19 | 78, 104 |  |  | 0d |  |  | Prasad [50%] | 20h |  |
| 106 | 4.20 | **QA 2011 "future"** |  | 11d | 2011-09-06 | 2011-09-20 |  |  |  | 2d |  |  |  | 120h |  |
| 107 | 4.20.1 | CSM 4.2.4 |  | 6d | 2011-09-06 | 2011-09-13 | 66, 89 |  |  | 3d | 0d | start no earlier than 2011-07-22 | Aynur | 48h |  |
| 108 | 4.20.2 | CLM 4.1.2 |  | 3d | 2011-09-14 | 2011-09-16 | 107 |  |  | 3d | 0d | start no earlier than 2011-06-27 | Aynur | 24h |  |
| 109 | 4.20.3 | SDK 4.5 |  | 6d | 2011-09-13 | 2011-09-20 | 65, 90 |  |  | 2d | 0d | start no earlier than 2011-06-24 | Xiaoling | 48h |  |
| 110 | 4.21 | Release activities 2011 "future" - concurrent with QA |  | 3d | 2011-09-20 | 2011-09-22 | 106FF, 105 |  |  | 0d |  |  | Prasad [50%] | 12h |  |
| 111 | 4.22 | Release activities 2011 "future" - post QA |  | 5d | 2011-09-23 | 2011-09-29 | 106, 105, 110 |  |  | 0d |  | start no earlier than 2011-07-20 | Prasad [50%] | 20h |  |
| 112 | 4.23 | **QA for upgraded non-core applications (not listed in tech stacks)** |  | 6d | 2011-09-19 | 2011-09-26 |  |  |  | 3d |  |  |  | 72h |  |
| 113 | 4.23.1 | Workbench |  | 3d | 2011-09-21 | 2011-09-23 | 69, 109 |  |  | 4d |  | start no earlier than 2011-08-22 | Xiaoling | 24h |  |
| 114 | 4.23.2 | ISO 21090 library |  | 3d | 2011-09-19 | 2011-09-21 | 68, 108 |  |  | 3d | 0d | start no earlier than 2011-08-22 | Aynur | 24h |  |
| 115 | 4.23.3 | CGMM |  | 3d | 2011-09-22 | 2011-09-26 | 114 |  |  | 3d |  | start no earlier than 2011-08-22 | Aynur | 24h |  |
| 116 | 4.24 | Release activities for non-core applications |  | 7d? | 2011-09-30 | 2011-10-10 | 112, 111 |  |  | 0d |  | start no earlier than 2011-08-22 | Prasad [50%] | 28h |  |
| 117 | 4.25 | (Target release date - 2010 "current") | milestone | 0d | 2011-08-11 | 2011-08-11 |  |  |  | 42d |  | start no earlier than 2011-08-11 |  |  |  |
| 118 | 4.26 | (Target release date - 2010 "future") | milestone | 0d | 2011-08-25 | 2011-08-25 |  |  |  | 32d |  | start no earlier than 2011-08-25 |  |  |  |

| ID | WBS | Task | Duration | Start | Finish | Predecessors | Complete | Remaining | Total slack | Free slack | Constraint | Resources | Work | Actual work |
| --- | --- | --- | --- | --- | --- | --- | --- | --- | --- | --- | --- | --- | --- | --- |
| 121 | 5 | **UPT Improvement Plan** | 133.25d? | 2011-03-14 A | 2011-09-20 |  | 71% | 38.01d? | 14.75d |  |  |  | 78h | 68h |
| 122 | 5.1 | Analysis of existing trackers | 6d | 2011-03-14 A | 2011-03-21 A |  | 100% |  |  |  | start no earlier than 2011-03-14 | Prasad | 48h | 48h |
| 123 | 5.2 | Requirements gathering with NBIA | 20d? | 2011-03-28 A | 2011-04-22 A |  | 100% |  |  |  | start no earlier than 2011-03-28 |  |  |  |
| 124 | 5.3 | Draft project plan development (partial) | 2d | 2011-05-13 A | 2011-05-16 A | 122, 123FF | 100% |  |  |  | start no earlier than 2011-05-13 |  |  |  |
| 125 | 5.4 | Internal review of proposed features | 0.25d | 2011-05-27 A | 2011-05-27 A | 124 | 100% |  |  |  | start no earlier than 2011-05-27 |  |  |  |
| 126 | 5.5 | **Research on use of systems-hosted older versions** | 56d? | 2011-06-13 A | 2011-08-30 | 125 | 76% | 13.58d? | 14.75d | 0d |  |  | 26h | 20h |
| 127 | 5.5.1 | Formulate initial query | 1d | 2011-06-13 A | 2011-06-13 A |  | 100% |  |  |  | start no earlier than 2011-06-13 | Greg [25%] | 2h | 2h |
| 128 | 5.5.2 | Lead time and systems response (est.) | 10d? | 2011-06-14 A | 2011-06-27 A | 127 | 100% |  |  |  |  |  |  |  |
| 129 | 5.5.3 | Formulate subsequent queries | 6d | 2011-06-28 A | 2011-07-06 A | 128 | 100% |  |  |  |  | Greg [25%] | 12h | 12h |
| 130 | 5.5.4 | Lead time and systems response (est.) | 5d? | 2011-07-07 A | 2011-07-13 A | 129 | 100% |  |  |  |  |  |  |  |
| 131 | 5.5.5 | Determine why subsequent queries returned no results and re-submit | 6d | 2011-08-02 A | 2011-08-23 |  | 50% | 3d | 14.75d | 0d | start no earlier than 2011-08-02 | Greg [25%] | 12h | 6h |
| 132 | 5.5.6 | Lead time and systems response (est.) | 5d? | 2011-08-24 | 2011-08-30 | 131 |  |  | 14.75d |  | start no earlier than 2011-08-02 |  |  |  |
| 133 | 5.6 | Follow up review of proposed features | 0.25d | 2011-08-31 | 2011-08-31 | 126 |  |  | 14.75d | 0d | start no earlier than 2011-06-01 |  |  |  |
| 134 | 5.7 | Draft project plan (complete) | 2d | 2011-08-31 | 2011-09-02 | 133 |  |  | 14.75d | 0d | start no earlier than 2011-06-27 | Greg [25%] | 4h |  |
| 135 | 5.8 | Review plan with user representatives and amend | 10d? | 2011-09-02 | 2011-09-19 | 134 |  |  | 14.75d | 0d |  |  |  |  |
| 136 | 5.9 | Plan approval | 1d? | 2011-09-19 | 2011-09-20 | 135 |  |  | 14.75d |  |  |  |  |  |
| 139 | 6 | **UPT enhancements [changes expected]** | 110d | 2011-10-11 | 2012-03-12 | 121, 41 |  |  | 0d |  |  |  |  |  |
| 140 | 6.1 | GF 30436 Better LDAP integration when adding users to UPT | 5d | 2011-10-11 | 2011-10-17 |  |  |  | 0d |  |  |  |  |  |
| 141 | 6.2 | GF 22524 Authentication - DataSource LoginModule | 3d | 2011-10-18 | 2011-10-20 | 140 |  |  | 0d |  |  |  |  |  |
| 142 | 6.3 | GF 1158/2830 Implement paging for UPT | 10d | 2011-10-21 | 2011-11-03 | 141 |  |  | 0d |  |  |  |  |  |
| 143 | 6.4 | GF 22540/29002/30435 Password changes | 10d | 2011-11-04 | 2011-11-17 | 142 |  |  | 0d |  |  |  |  |  |
| 144 | 6.5 | GF 15527 CSM username field length should be increased to 100 characters | 1d | 2011-11-18 | 2011-11-18 | 143 |  |  | 0d |  |  |  |  |  |
| 145 | 6.6 | GF 19369 Indicate UPT /CSM version names in the Application Header after login | 2d | 2011-11-21 | 2011-11-22 | 144 |  |  | 0d |  |  |  |  |  |
| 146 | 6.7 | GF 631/22236 Password recovery | 5d | 2011-11-23 | 2011-11-29 | 145 |  |  | 0d |  |  |  |  |  |
| 147 | 6.8 | GF 30019 User lockout on unsuccessful logins | 5d | 2011-11-30 | 2011-12-06 | 146 |  |  | 0d |  |  |  |  |  |
| 148 | 6.9 | GF 2913 Add an Active Flag for users | 5d | 2011-12-07 | 2011-12-13 | 147 |  |  | 0d |  |  |  |  |  |
| 149 | 6.10 | GF 24404 UPT GUI installer should validate database connection info | 3d | 2011-12-14 | 2011-12-16 | 148 |  |  | 0d |  |  |  |  |  |
| 150 | 6.11 | GF 30372 Change UPT install.properties file to note properties that must be replaced | 1d | 2011-12-19 | 2011-12-19 | 149 |  |  | 0d |  |  |  |  |  |
| 151 | 6.12 | GF 1154/30433 Synchronization between UPT and supported application | 15d | 2011-12-20 | 2012-01-09 | 150 |  |  | 0d |  |  |  |  |  |
| 152 | 6.13 | GF 24965 Documentation changes from CDL installation | 1d | 2012-01-10 | 2012-01-10 | 151 |  |  | 0d |  |  |  |  |  |
| 153 | 6.14 | GF 24116 Need stronger access control | 10d | 2012-01-11 | 2012-01-24 | 152 |  |  | 0d |  |  |  |  |  |
| 154 | 6.15 | GF 2914 Auto-email new user or associated user | 4d | 2012-01-25 | 2012-01-30 | 153 |  |  | 0d |  |  |  |  |  |
| 155 | 6.16 | User friendly UPT UI | 15d | 2012-01-31 | 2012-02-20 | 154 |  |  | 0d |  |  |  |  |  |
| 156 | 6.17 | Customizable UPT UI | 15d | 2012-02-21 | 2012-03-12 | 155 |  |  | 0d |  |  |  |  |  |

| ID | WBS | Task | Type | Duration | Start | Finish | Predecessors | Complete | Remaining | Total slack | Free slack | Constraint | Resources | Work | Actual work |
| --- | --- | --- | --- | --- | --- | --- | --- | --- | --- | --- | --- | --- | --- | --- | --- |
| 159 | 7 | **XMI Handler** |  | 17d? | 2011-08-17 A | 2011-09-09 |  | 14% | 14.57d? | 131d |  |  |  | 8h | 4h |
| 160 | 7.1 | Test use of new XMI Handler modeling features with SIW and document results |  | 4d | 2011-08-17 A | 2011-08-25 |  | 50% | 2d | 131d | 0d | start no earlier than 2011-08-17 | Greg [25%] | 8h | 4h |
| 161 | 7.2 | Coordinate official 1.1 release |  | 5d? | 2011-08-26 | 2011-09-01 | 160 |  |  | 131d | 0d | start no earlier than 2011-06-29 |  |  |  |
| 162 | 7.3 | Coordinate 1.2 release (tech stack upgrade)? |  | 5d? | 2011-09-02 | 2011-09-09 | 58, 161 |  |  | 131d |  | start no earlier than 2011-06-30 |  |  |  |
| 165 | 8 | **Analysis** |  | 144d | 2011-03-22 A | 2011-10-12 |  | 84% | 22.91d | 108d |  |  |  | 238h | 216h |
| 166 | 8.1 | Eclipse/SDK comparison and gap analysis |  | 5d | 2011-03-22 A | 2011-03-28 A |  | 100% |  |  |  | start no earlier than 2011-03-22 | Prasad | 40h | 40h |
| 167 | 8.2 | User requirements/need for SDK (combined with Eclipse/SDK analysis) |  | 3d | 2011-04-15 A | 2011-04-19 A |  | 100% |  |  |  | start no earlier than 2011-04-15 | Prasad [75%] | 18h | 18h |
| 168 | 8.3 | caGrid with JBoss 5.1 |  | 3d | 2011-05-05 A | 2011-05-12 A |  | 100% |  |  |  | start no earlier than 2011-05-05 | Prasad | 24h | 24h |
| 169 | 8.4 | Ideal architecture for separation of SDK and caGrid [incomplete, deferred indefinitely] |  | 2d | 2011-06-09 A | 2011-06-10 A |  | 100% |  |  |  | start no earlier than 2011-06-09 | Prasad [50%] | 8h | 8h |
| 170 | 8.5 | Test Globus WSRF (caGrid) and JBoss 5.1 |  | 1d | 2011-06-13 A | 2011-06-13 A |  | 100% |  |  |  | start no earlier than 2011-06-13 | Prasad | 8h | 8h |
| 171 | 8.6 | Evaluate caTissue source with respect to potential use of SDK |  | 3d | 2011-06-16 A | 2011-06-20 A |  | 100% |  |  |  | start no earlier than 2011-06-16 | Prasad | 24h | 24h |
| 172 | 8.7 | Review and revise caTissue/SDK analysis |  | 1d | 2011-06-21 A | 2011-06-21 A | 171 | 100% |  |  |  |  | Prasad | 8h | 8h |
| 173 | 8.8 | caTissue Jamboree |  | 3d | 2011-06-22 A | 2011-06-24 A |  | 100% |  |  |  | finish no earlier than 2011-06-24 | Prasad [50%] | 12h | 12h |
| 174 | 8.9 | NBIA security discussion on federated grid credentials |  | 2d | 2011-06-29 A | 2011-06-30 A |  | 100% |  |  |  | start no earlier than 2011-06-29 | Prasad [25%] | 4h | 4h |
| 175 | 8.10 | ISO/SDK use - examples and presentation |  | 3d | 2011-07-13 A | 2011-07-15 A |  | 100% |  |  |  | start no earlier than 2011-07-13 | Prasad | 24h | 24h |
| 176 | 8.11 | SDK capabilities documentation & presentation support |  | 2d | 2011-07-25 A | 2011-07-26 A |  | 100% |  |  |  | start no earlier than 2011-07-25 | Prasad [75%] | 12h | 12h |
| 177 | 8.12 | ISO/SDK use - examples and presentation (revisited) |  | 4d | 2011-07-27 A | 2011-08-01 A |  | 100% |  |  |  | start no earlier than 2011-07-27 | Prasad [75%] | 24h | 24h |
| 178 | 8.13 | Ideal architecture for separation of SDK and caGrid |  | 2d | 2011-10-11 | 2011-10-12 | 116 |  |  | 107d | 0d | start no earlier than 2011-07-18 | Prasad [75%] | 12h |  |
| 179 | 8.14 | Investigate problem with caGrid-flavored CQL and SDK 4.4 w/ ISO data types despite workaround |  | 10d | 2011-07-18 A | 2011-08-19 |  | 50% | 5d | 145d |  | start no earlier than 2011-07-18 | Dan [25%] | 20h | 10h |
| 182 | 9 | **CSM bug fixes (code - no release specified)** |  | 6d | 2011-03-14 A | 2011-03-21 A |  | 100% |  |  |  |  |  | 48h | 48h |
| 183 | 9.1 | GF 29450 CSM – Users locked out due to invalid logins may be (effectively) locked out forever |  | 5d | 2011-03-14 A | 2011-03-18 A |  | 100% |  |  |  | start no earlier than 2011-03-14 | Vijay | 40h | 40h |
| 184 | 9.2 | GF 30372 CSM/UPT - Change UPT install.properties file to note properties that must be replaced |  | 1d | 2011-03-21 A | 2011-03-21 A |  | 100% |  |  |  | start no earlier than 2011-03-21 | Vijay | 8h | 8h |
| 187 | 10 | **SDK 4.1.3 - GF 27529 patch to 4.1.2 (for caBIO)** |  | 0d | 2011-03-14 A | 2011-03-14 |  |  | 0d | 258d |  |  |  |  |  |
| 188 | 10.1 | apply fix for GF 27529 to 4.1.2 [already done] | milestone | 0d | 2011-03-14 A | 2011-03-14 A |  | 100% |  |  |  | start no earlier than 2011-03-14 |  |  |  |
| 189 | 10.2 | QA [low priority] [deferred indefinitely] | milestone | 0d | 2011-03-14 | 2011-03-14 | 188 |  |  | 258d | 0d | start no earlier than 2011-02-17 |  |  |  |
| 190 | 10.3 | Gforge post [no longer applicable] | milestone | 0d | 2011-03-14 | 2011-03-14 | 189 |  |  | 258d |  |  |  |  |  |

| ID | WBS | Task | Duration | Start | Finish | Predecessors | Complete | Remaining | Total slack | Constraint | Resources | Work | Actual work |
| --- | --- | --- | --- | --- | --- | --- | --- | --- | --- | --- | --- | --- | --- |
| 193 | 11 | **General support to date (only large tasks called out)** | 193d? | 2011-01-13 A | 2011-10-13 |  | 90% | 19.87d? | 107d |  |  | 226.8h | 212.8h |
| 194 | 11.1 | General support through 6/3 | 53d | 2011-03-22 A | 2011-06-03 A |  | 100% |  |  | finish no earlier than 2011-06-03 | Dan [25%] | 106h | 106h |
| 195 | 11.2 | General support 6/6-6/10 | 5d | 2011-06-06 A | 2011-06-10 A |  | 100% |  |  | start no earlier than 2011-06-06 | Dan [25%] | 10h | 10h |
| 196 | 11.3 | General support 6/13-6/17 | 5d | 2011-06-13 A | 2011-06-17 A |  | 100% |  |  | start no earlier than 2011-06-13 | Dan [15%] | 6h | 6h |
| 197 | 11.4 | General support 6/20-6/24 | 5d | 2011-06-20 A | 2011-06-24 A |  | 100% |  |  | start no earlier than 2011-06-20 | Dan [15%] | 6h | 6h |
| 198 | 11.5 | General support 6/27-7/1 | 5d | 2011-06-27 A | 2011-07-01 A |  | 100% |  |  | start no earlier than 2011-06-27 | Dan [35%] | 14h | 14h |
| 199 | 11.6 | General support 7/5-7/8 | 4d | 2011-07-05 A | 2011-07-08 A |  | 100% |  |  | start no earlier than 2011-07-05 | Dan [15%] | 4.8h | 4.8h |
| 200 | 11.7 | General support 7/11-7/15 | 5d | 2011-07-11 A | 2011-07-15 A |  | 100% |  |  | start no earlier than 2011-07-11 | Dan [5%] | 2h | 2h |
| 201 | 11.8 | caTissue | 6d | 2011-07-11 A | 2011-07-18 A |  | 100% |  |  | start no earlier than 2011-07-11 | Greg [25%] | 12h | 12h |
| 202 | 11.9 | General support 7/18-7/23 | 5d | 2011-07-18 A | 2011-07-22 A |  | 100% |  |  | start no earlier than 2011-07-18 | Dan [10%] | 4h | 4h |
| 203 | 11.10 | 508 remediation (manual tests) for hosted UPT | 3d | 2011-07-20 A | 2011-07-22 A |  | 100% |  |  | start no earlier than 2011-07-20 | Greg [25%] | 6h | 6h |
| 204 | 11.11 | General support 7/25-7/29 | 5d | 2011-07-25 A | 2011-07-29 A |  | 100% |  |  | start no earlier than 2011-07-25 | Dan [15%] | 6h | 6h |
| 205 | 11.12 | caTissue (caGrid/SDK integration) | 4d | 2011-07-25 A | 2011-07-29 A |  | 100% |  |  | start no earlier than 2011-07-25 | Greg [25%] | 8h | 8h |
| 206 | 11.13 | General support 8/1-8/5 | 5d | 2011-08-01 A | 2011-08-05 A |  | 100% |  |  | start no earlier than 2011-08-01 | Dan [10%] | 4h | 4h |
| 207 | 11.14 | General support 8/8-8/12 | 5d | 2011-08-08 A | 2011-08-12 A |  | 100% |  |  | start no earlier than 2011-08-08 | Dan [10%] | 4h | 4h |
| 208 | 11.15 | CLOB modeling | 1d | 2011-08-12 A | 2011-08-12 A |  | 100% |  |  | start no earlier than 2011-08-12 | Prasad | 8h | 8h |
| 209 | 11.16 | General support 8/15-8/19 | 5d | 2011-08-15 A | 2011-08-19 A |  | 100% |  |  | start no earlier than 2011-08-15 | Dan [10%] | 4h | 4h |
| 210 | 11.17 | CSM connection pooling | 1d | 2011-08-16 A | 2011-08-16 A |  | 100% |  |  | start no earlier than 2011-08-16 | Prasad | 8h | 8h |
| 211 | 11.18 | General support 8/22-8/26 | 5d | 2011-08-22 | 2011-08-26 |  |  |  | 140d | start no earlier than 2011-08-22 | Dan [15%] | 6h |  |
| 212 | 11.19 | Document migration activities/issues moving from SDK 4.0 to 4.4 (using caDSR as an example) | 1d? | 2011-10-13 | 2011-10-13 | 178 |  |  | 107d | start no earlier than 2011-07-05 | Prasad | 8h |  |
| 213 | 11.20 | Write SDK product support FAQ’s and post on KC | 5d? | 2011-01-13 | 2011-01-19 |  |  |  | 295d | start no earlier than 2011-01-13 |  |  |  |
| 214 | 11.21 | Write CSM product support FAQ’s and post on KC | 3d? | 2011-01-13 | 2011-01-17 |  |  |  | 297d | start no earlier than 2011-01-13 |  |  |  |
| 217 | 12 | **Project Management to date (only large tasks called out)** | 118d | 2011-03-14 A | 2011-08-26 |  | 95% | 5.36d | 140d |  |  | 346h | 336h |
| 218 | 12.1 | PM and misc work through 6/3 | 59d | 2011-03-14 A | 2011-06-03 A |  | 100% |  |  | finish no earlier than 2011-06-03 | Greg [50%] | 236h | 236h |
| 219 | 12.2 | General PM 6/6-6/10 | 5d | 2011-06-06 A | 2011-06-10 A |  | 100% |  |  | start no earlier than 2011-06-06 | Greg [25%] | 10h | 10h |
| 220 | 12.3 | General PM 6/13-6/17 | 5d | 2011-06-13 A | 2011-06-17 A |  | 100% |  |  | start no earlier than 2011-06-13 | Greg [25%] | 10h | 10h |
| 221 | 12.4 | Update project management plan | 2d | 2011-06-22 A | 2011-06-23 A |  | 100% |  |  | start no earlier than 2011-06-22 | Greg [50%] | 8h | 8h |
| 222 | 12.5 | General PM 6/23-6/24 | 2d | 2011-06-23 A | 2011-06-24 A |  | 100% |  |  | start no earlier than 2011-06-23 | Greg [25%] | 4h | 4h |
| 223 | 12.6 | General PM 6/27-7/1 | 5d | 2011-06-27 A | 2011-07-01 A |  | 100% |  |  | start no earlier than 2011-06-27 | Greg [25%] | 10h | 10h |
| 224 | 12.7 | General PM 7/5-7/8 | 4d | 2011-07-05 A | 2011-07-08 A |  | 100% |  |  | start no earlier than 2011-07-05 | Greg [25%] | 8h | 8h |
| 225 | 12.8 | General PM 7/11-7/15 | 5d | 2011-07-11 A | 2011-07-15 A |  | 100% |  |  | start no earlier than 2011-07-11 | Greg [25%] | 10h | 10h |
| 226 | 12.9 | General PM 7/18-7/23 | 5d | 2011-07-18 A | 2011-07-22 A |  | 100% |  |  | start no earlier than 2011-07-18 | Greg [25%] | 10h | 10h |
| 227 | 12.10 | General PM 7/25-7/29 | 4d | 2011-07-25 A | 2011-07-29 A |  | 100% |  |  | start no earlier than 2011-07-25 | Greg [25%] | 8h | 8h |
| 228 | 12.11 | General PM 8/1-8/4 | 4d | 2011-08-01 A | 2011-08-04 A |  | 100% |  |  | start no earlier than 2011-08-01 | Greg [25%] | 8h | 8h |
| 229 | 12.12 | General PM 8/15-8/19 | 5d | 2011-08-15 A | 2011-08-19 A |  | 100% |  |  | start no earlier than 2011-08-15 | Greg [35%] | 14h | 14h |
| 230 | 12.13 | General PM 8/22-8/26 | 5d | 2011-08-22 | 2011-08-26 |  |  |  | 140d | finish no earlier than 2011-08-26 | Greg [25%] | 10h |  |

| ID | WBS | Task | Duration | Start | Finish | Total slack | Constraint |
| --- | --- | --- | --- | --- | --- | --- | --- |
| 233 | 13 | **Other unplanned** | 1d? | 2011-01-13 | 2011-01-13 | 299d |  |
| 234 | 13.1 | 508 compliance review and plan | 1d? | 2011-01-13 | 2011-01-13 | 299d | start no earlier than 2011-01-13 |
| 235 | 13.2 | ECCF compliance review and plan | 1d? | 2011-01-13 | 2011-01-13 | 299d | start no earlier than 2011-01-13 |
| 236 | 13.3 | Effect of NCI CBIIT’s Enterprise Security Program on CSM | 1d? | 2011-01-13 | 2011-01-13 | 299d | start no earlier than 2011-01-13 |
| 237 | 13.4 | Effect of NCI CBIIT’s Enterprise Security Program on CLM | 1d? | 2011-01-13 | 2011-01-13 | 299d | start no earlier than 2011-01-13 |
